# 12-14-01月开发计划

Schedule from MS Project, 2013-12-03 to 2014-02-18, A marks actual dates.
Microsoft

## Calendars

- 标准: Mon-Fri 08:00-12:00, 13:00-17:00; Sat-Sun off. Exceptions (off unless hours are given): 2014-01-01 (元旦).

## Resources

| Resource |
| --- |
| 陈尚轩 |
| 张拥国 |
| 何一帆 |
| 颜超敏 |
| 张艳平 |
| 徐晨星 |
| 吴志宏 |
| 庄晓辉 |
| 何大洪 |
| 张鹏 |
| 黄黎 |

## Schedule

| ID | WBS | Task | Type | Duration | Start | Finish | Predecessors | Complete | Remaining | Total slack | Free slack | Constraint | Resources | Work | Actual work |
| --- | --- | --- | --- | --- | --- | --- | --- | --- | --- | --- | --- | --- | --- | --- | --- |
| 1 | 1 | 数据库表结构整理及调整 | manual | 4d | 2013-12-05 | 2013-12-10 |  |  |  |  |  |  | 陈尚轩 | 32h |  |
| 2 | 2 | 代码生成器的模板调整 | manual | 2d | 2013-12-05 | 2013-12-06 |  |  |  |  |  |  | 张艳平 | 16h |  |
| 3 | 3 | **组织架构管理** |  | 14d | 2013-12-05 A | 2013-12-24 |  | 5% | 13.3d | 3.5d |  |  |  | 160h | 8h |
| 4 | 3.1 | 用户管理 | manual | 3d | 2013-12-05 | 2013-12-09 |  |  |  |  |  |  | 何一帆 | 24h |  |
| 5 | 3.2 | 用户关系（上下级关系）管理 | manual | 2d | 2013-12-09 | 2013-12-10 | 2 |  |  |  |  |  | 张艳平 | 16h |  |
| 6 | 3.3 | 维度管理 |  | 1.5d | 2013-12-10 | 2013-12-11 | 4 |  |  | 12d | 0d |  | 何一帆 | 12h |  |
| 7 | 3.4 | **组管理** |  | 10d | 2013-12-11 A | 2013-12-24 |  | 9% | 9.13d | 0d |  |  |  | 92h | 8h |
| 8 | 3.4.1 | 组织管理 | manual | 2d | 2013-12-11 | 2013-12-13 | 6 |  |  |  |  |  | 何一帆 | 16h |  |
| 9 | 3.4.2 | 角色管理 | manual | 1.5d | 2013-12-11 | 2013-12-12 | 5 |  |  |  |  |  | 张艳平 | 12h |  |
| 10 | 3.4.3 | 职务管理 | manual | 2d | 2013-12-12 | 2013-12-16 | 9 |  |  |  |  |  | 张艳平 | 16h |  |
| 11 | 3.4.4 | 岗位管理 | manual | 2d | 2013-12-16 | 2013-12-18 | 10 |  |  |  |  |  | 张艳平 | 16h |  |
| 12 | 3.4.5 | 用户组管理 | manual | 2d | 2013-12-18 | 2013-12-20 | 11 |  |  |  |  |  | 张艳平 | 16h |  |
| 13 | 3.4.6 | 用户及组的关系管理 | manual | 2d | 2013-12-23 A | 2013-12-24 | 12 | 50% | 1d |  |  |  | 张艳平 | 16h | 8h |
| 14 | 3.5 | 数据库访问基础组件配置文件合并扩展 | manual | 2d | 2013-12-05 | 2013-12-06 |  |  |  |  |  |  | 颜超敏 | 16h |  |
| 15 | 4 | **流程定义管理** |  | 42d? | 2013-12-09 | 2014-02-05 |  |  |  | 0d |  |  |  | 536h |  |
| 16 | 4.1 | 流程定义保存草稿 | manual | 2d | 2013-12-09 | 2013-12-10 | 14 |  |  |  |  |  | 颜超敏 | 16h |  |
| 17 | 4.2 | 流程定义保存发布 | manual | 4d | 2013-12-11 | 2013-12-16 | 16 |  |  |  |  |  | 颜超敏 | 32h |  |
| 18 | 4.3 | Activiti流程定义文件格式定义 | manual | 2d | 2013-12-09 | 2013-12-10 |  |  |  |  |  |  | 张拥国 | 16h |  |
| 19 | 4.4 | Activiti流程定义文件转化 | manual | 2d | 2013-12-11 | 2013-12-12 | 18 |  |  |  |  |  | 张拥国 | 16h |  |
| 20 | 4.5 | 更新流程定义 | manual | 1.5d | 2013-12-17 | 2013-12-18 | 17 |  |  |  |  |  | 颜超敏 | 12h |  |
| 21 | 4.6 | 发布流程定义新版本 | manual | 2d | 2013-12-18 | 2013-12-20 | 20 |  |  |  |  |  | 颜超敏 | 16h |  |
| 22 | 4.7 | 获取所有某一流程定义的所有版本 | manual | 1d | 2013-12-20 | 2013-12-23 | 21 |  |  |  |  |  | 颜超敏 | 8h |  |
| 23 | 4.8 | 流程定义查询 | manual | 1d | 2013-12-23 | 2013-12-24 | 22 |  |  |  |  |  | 颜超敏 | 8h |  |
| 24 | 4.9 | 流程定义的节点人员设置 | manual | 3d | 2013-12-13 | 2013-12-18 | 8 |  |  |  |  |  | 何一帆 | 24h |  |
| 25 | 4.10 | 流程定义的表单关联设置 | manual | 5d | 2013-12-13 | 2013-12-19 | 19 |  |  |  |  |  | 张拥国 | 40h |  |
| 26 | 4.11 | 流程定义的跳转规则设置 | manual | 3d | 2013-12-11 | 2013-12-13 | 16 |  |  |  |  |  | 徐晨星 | 24h |  |
| 27 | 4.12 | 流程定义的催办设置 | manual | 3d | 2013-12-18 | 2013-12-23 | 24 |  |  |  |  |  | 何一帆 | 24h |  |
| 28 | 4.13 | 预警级别设置 |  | 4d | 2013-12-23 | 2013-12-27 | 27 |  |  | 14.5d | 0d |  | 何一帆 | 32h |  |
| 29 | 4.14 | 流程定义授权管理 | manual | 3d | 2013-12-16 | 2013-12-18 | 26 |  |  |  |  |  | 徐晨星 | 24h |  |
| 30 | 4.15 | 查看我的流程定义 | manual | 1d | 2013-12-20 | 2013-12-20 | 25 |  |  |  |  |  | 张拥国 | 8h |  |
| 31 | 4.16 | 获取流程定义的节点配置 | manual | 2d | 2013-12-23 | 2013-12-24 | 30 |  |  |  |  |  | 张拥国 | 16h |  |
| 32 | 4.17 | 获取流程定义的开始节点、结束节点 |  | 3d | 2013-12-25 | 2013-12-27 | 31 |  |  | 1d | 0d |  | 张拥国 | 24h |  |
| 33 | 4.18 | 获取流程定义配置列表 | manual | 3d | 2013-12-19 | 2013-12-23 | 29 |  |  |  |  |  | 徐晨星 | 24h |  |
| 34 | 4.19 | 流程定义的状态更新接口开发 | manual | 2d | 2013-12-24 | 2013-12-25 | 33 |  |  |  |  |  | 徐晨星 | 16h |  |
| 35 | 4.20 | 判断流程定义是否有外部子流程 | manual | 1d | 2013-12-30 | 2013-12-30 | 32 |  |  |  |  |  | 张拥国 | 8h |  |
| 36 | 4.21 | 流程定义的缓存管理（集群） | manual | 3d | 2014-01-02 | 2014-02-05 | 35 |  |  |  |  | start no earlier than 2014-01-02 | 张拥国 | 24h |  |

| ID | WBS | Task | Type | Duration | Start | Finish | Predecessors | Total slack | Free slack | Constraint | Resources | Work |
| --- | --- | --- | --- | --- | --- | --- | --- | --- | --- | --- | --- | --- |
| 37 | 4.22 | **流程定义的变量管理** |  | 4d | 2013-12-26 | 2013-12-31 |  | 0d |  |  |  | 32h |
| 38 | 4.22.1 | 增加流程定义变量 | manual | 1d | 2013-12-26 | 2013-12-26 | 34 |  |  |  | 何大洪 | 8h |
| 39 | 4.22.2 | 删除流程定义变量 | manual | 1d | 2013-12-27 | 2013-12-27 | 38 |  |  |  | 何大洪 | 8h |
| 40 | 4.22.3 | 复合的流程定义关联变量及映射 | manual | 2d | 2013-12-30 | 2013-12-31 | 39 |  |  |  | 何大洪 | 16h |
| 41 | 4.23 | 流程定义的分类管理 | manual | 1d? | 2013-12-09 | 2013-12-09 |  |  |  |  |  |  |
| 42 | 4.24 | 流程定义的导出 | manual | 5d | 2013-12-23 | 2013-12-30 | 27 |  |  |  | 庄晓辉 | 40h |
| 43 | 4.25 | 流程定义的导入 |  | 5d | 2013-12-30 | 2014-01-07 | 42 | 12d | 0d |  | 庄晓辉 | 40h |
| 44 | 4.26 | 删除流程定义 |  | 1.5d | 2014-01-07 | 2014-01-20 | 43 | 4d | 0d |  | 庄晓辉 | 12h |
| 45 | 5 | **流程定义的功能测试** |  | 10d | 2013-12-25 | 2014-01-08 |  | 0d |  |  |  | 80h |
| 46 | 5.1 | 单元测试 | manual | 5d | 2013-12-25 | 2013-12-31 |  |  |  | start no earlier than 2013-12-25 | 黄黎 | 40h |
| 47 | 5.2 | 代码检查及审核 |  | 5d | 2014-01-02 | 2014-01-08 | 46 | 15d | 0d |  | 黄黎 | 40h |
| 48 | 6 | **流程实例管理** |  | 20.5d | 2013-12-11 | 2014-01-09 |  | 28.5d |  |  |  | 160h |
| 49 | 6.1 | 启动流程 |  | 1.5d | 2013-12-11 | 2013-12-12 |  | 19.5d | 0d |  | 陈尚轩 | 12h |
| 50 | 6.2 | 取得某用户发起的流程实例列表 |  | 2d | 2013-12-12 | 2013-12-16 | 49 | 19.5d | 0d |  | 张鹏 | 16h |
| 51 | 6.3 | 取得我参与的流程实例列表 |  | 1d | 2013-12-17 | 2013-12-17 | 50 | 19.5d | 0d |  | 张鹏 | 8h |
| 52 | 6.4 | 取得某个流程实例的所有的审批意见列表 |  | 1d | 2013-12-18 | 2013-12-18 | 51 | 19.5d | 0d |  | 张鹏 | 8h |
| 53 | 6.5 | 取得所有的流程实例 |  | 1d | 2013-12-19 | 2013-12-19 | 52 | 19.5d | 0d |  | 张鹏 | 8h |
| 54 | 6.6 | 删除流程实例 |  | 3d | 2013-12-20 | 2013-12-24 | 53 | 19.5d | 0d |  | 张鹏 | 24h |
| 55 | 6.7 | 挂起流程实例 |  | 1d | 2013-12-25 | 2013-12-25 | 54 | 19.5d | 0d |  | 张鹏 | 8h |
| 56 | 6.8 | 恢复挂起的流程实例 |  | 1.5d | 2013-12-26 | 2013-12-27 | 55 | 19.5d | 0d |  | 张鹏 | 12h |
| 57 | 6.9 | 结束流程实例 |  | 1d | 2013-12-27 | 2013-12-30 | 56 | 19.5d | 0d |  | 张鹏 | 8h |
| 58 | 6.10 | 流程明细 |  | 2d | 2013-12-30 | 2014-01-02 | 57 | 19.5d | 0d |  | 张鹏 | 16h |
| 59 | 6.11 | 生成流程实例汇总报告 |  | 5d | 2014-01-02 | 2014-01-09 | 58 | 19.5d |  |  | 张鹏 | 40h |
| 60 | 7 | **流程代理设置** |  | 8d | 2014-01-21 | 2014-01-30 |  | 0d |  |  |  | 64h |
| 61 | 7.1 | 流程定义的个人代理 | manual | 3d | 2014-01-21 | 2014-01-23 | 44 |  |  |  | 庄晓辉 | 24h |
| 62 | 7.2 | 流程定义的全部代理 | manual | 1d | 2014-01-24 | 2014-01-24 | 61 |  |  |  | 庄晓辉 | 8h |
| 63 | 7.3 | 查看我的代理的任务 | manual | 1d | 2014-01-27 | 2014-01-27 | 62 |  |  |  | 庄晓辉 | 8h |
| 64 | 7.4 | 取消我的代理任务 |  | 1d | 2014-01-28 | 2014-01-28 | 63 | 13d | 0d |  | 庄晓辉 | 8h |
| 65 | 7.5 | 获取某一用户代理给别人的任务列表 |  | 1d | 2014-01-29 | 2014-01-29 | 64 | 13d | 0d |  | 庄晓辉 | 8h |
| 66 | 7.6 | 代理任务给单个用户或多个用户或用户组 | manual | 1d | 2014-01-30 | 2014-01-30 | 65 |  |  |  | 庄晓辉 | 8h |

| ID | WBS | Task | Type | Duration | Start | Finish | Predecessors | Total slack | Free slack | Resources | Work |
| --- | --- | --- | --- | --- | --- | --- | --- | --- | --- | --- | --- |
| 67 | 8 | **流程任务管理** |  | 44.5d | 2013-12-17 | 2014-02-18 |  | 0d |  |  | 424h |
| 68 | 8.1 | 按用户ID获取所有的待办任务列表 | manual | 2d | 2013-12-17 | 2013-12-19 | 49 |  |  | 陈尚轩 | 16h |
| 69 | 8.2 | 查找所有的任务列表并进行分页过滤查询 | manual | 2d | 2013-12-19 | 2013-12-23 | 68 |  |  | 陈尚轩 | 16h |
| 70 | 8.3 | 完成任务(包括自由跳转） | manual | 5d | 2013-12-23 | 2013-12-30 | 69 |  |  | 陈尚轩 | 40h |
| 71 | 8.4 | 任务回退 | manual | 5d | 2013-12-30 | 2014-01-07 | 70 |  |  | 陈尚轩 | 40h |
| 72 | 8.5 | 评论任务 | manual | 2d | 2013-12-26 | 2013-12-27 | 34 |  |  | 徐晨星 | 16h |
| 73 | 8.6 | 抄送任务 |  | 3d | 2013-12-30 | 2014-01-02 | 72 | 23d | 0d | 徐晨星 | 24h |
| 74 | 8.7 | 动态加签 | manual | 3d | 2014-01-03 | 2014-01-07 | 73 |  |  | 徐晨星 | 24h |
| 75 | 8.8 | 任务沟通 | manual | 3d | 2014-01-08 | 2014-01-10 | 74 |  |  | 徐晨星 | 24h |
| 76 | 8.9 | 从一任务中复制另一任务 | manual | 3d | 2014-02-06 | 2014-02-10 | 36 |  |  | 张拥国 | 24h |
| 77 | 8.10 | 任务抄送多个用户或用户组 | manual | 2d | 2014-02-11 | 2014-02-12 | 76 |  |  | 张拥国 | 16h |
| 78 | 8.11 | 获取抄送给某用户的任务 | manual | 2d | 2014-02-13 | 2014-02-14 | 77 |  |  | 张艳平 | 16h |
| 79 | 8.12 | 任务分发处理 | manual | 2d | 2014-02-17 | 2014-02-18 | 78 |  |  | 张拥国 | 16h |
| 80 | 8.13 | 任务催办 | manual | 5d | 2013-12-27 | 2014-01-06 | 28 |  |  | 何一帆 | 40h |
| 81 | 8.14 | 锁定任务为某人执行 | manual | 1d | 2013-12-25 | 2013-12-25 | 13 |  |  | 张艳平 | 8h |
| 82 | 8.15 | 解锁任务 | manual | 1d | 2013-12-26 | 2013-12-26 | 81 |  |  | 张艳平 | 8h |
| 83 | 8.16 | 对某一任务进行加签 | manual | 4d | 2014-01-13 | 2014-01-16 | 75 |  |  | 徐晨星 | 32h |
| 84 | 8.17 | 任务转办 |  | 2d | 2014-01-06 | 2014-01-08 | 80 | 14.5d | 0d | 何一帆 | 16h |
| 85 | 8.18 | 获取我的转办记录 |  | 1d | 2014-01-08 | 2014-01-09 | 84 | 14.5d | 0d | 何一帆 | 8h |
| 86 | 8.19 | 获取别人转给我办理的记录 |  | 1d | 2014-01-09 | 2014-01-10 | 85 | 14.5d | 0d | 何一帆 | 8h |
| 87 | 8.20 | 任务追回 |  | 2d | 2014-01-10 | 2014-01-14 | 86 | 14.5d | 0d | 何一帆 | 16h |
| 88 | 8.21 | 获取当前任务的执行人 |  | 2d | 2014-01-14 | 2014-01-16 | 87 | 14.5d |  | 何一帆 | 16h |
| 90 | 9 | **流程历史管理** |  | 14d | 2013-12-20 | 2014-01-09 |  | 0d |  |  | 64h |
| 91 | 9.1 | 查找所有的流程历史 | manual | 2d | 2013-12-20 | 2013-12-23 |  |  |  | 何大洪 | 16h |
| 92 | 9.2 | 通过ID查找程历史实例 | manual | 2d | 2013-12-24 | 2013-12-25 | 91 |  |  | 何大洪 | 16h |
| 93 | 9.3 | 取得某个用户发起的归档的流程实例 |  | 2d | 2014-01-02 | 2014-01-07 | 92 | 19d | 0d | 何大洪 | 16h |
| 94 | 9.4 | 取得某用户参与的归档流程实例列表 | manual | 1d | 2014-01-08 | 2014-01-08 | 93 |  |  | 何大洪 | 8h |
| 95 | 9.5 | 删除流程历史明细 | manual | 1d | 2014-01-09 | 2014-01-09 | 94 |  |  | 何大洪 | 8h |
| 96 | 10 | 流程日志管理 | manual | 5d | 2013-12-27 | 2014-01-03 | 82 |  |  | 张艳平 | 40h |
| 97 | 11 | 流程异常处理 | manual | 4d | 2014-01-06 | 2014-01-09 | 96 |  |  | 张艳平 | 32h |
| 98 | 12 | 单元测试 |  | 5d | 2014-01-09 | 2014-01-15 | 47 | 24d |  | 黄黎 | 40h |
| 99 | 13 | 代码检查及审核 |  | 5d | 2013-12-03 | 2013-12-09 | 98 | 50d |  | 黄黎 | 40h |

| ID | WBS | Task | Type | Duration | Start | Finish | Predecessors | Total slack | Free slack | Resources | Work |
| --- | --- | --- | --- | --- | --- | --- | --- | --- | --- | --- | --- |
| 100 | 14 | **流程监控管理** |  | 21.5d | 2013-12-24 | 2014-01-24 |  | 2.5d |  |  | 48h |
| 101 | 14.1 | 流程图生成 |  | 6d | 2013-12-24 | 2014-01-02 | 23 | 18d | 0d | 颜超敏 | 48h |
| 103 | 14.2 | 产品Alpha版本发布 | milestone, manual | 0d | 2014-01-24 | 2014-01-24 |  |  |  |  |  |
| 106 | 15 | 流程表单管理模块 |  | 15d | 2014-01-02 | 2014-01-23 | 101 | 18d |  | 颜超敏; 张拥国 | 240h |
| 107 | 16 | UI模块开发 | manual | 1d? | 2013-12-03 | 2013-12-03 |  |  |  |  |  |
