# 项目计划

Schedule from MS Project, 2013-11-01 to 2013-11-26.
Microsoft

## Calendars

- 标准: Mon-Fri 08:00-12:00, 13:00-17:00; Sat-Sun off.

## Resources

| Resource |
| --- |
| 陈尚轩 |
| 张拥国 |
| 黄黎 |
| 颜超敏 |

## Schedule

| ID | Task | Type | Duration | Start | Finish | Predecessors | Resources | Work |
| --- | --- | --- | --- | --- | --- | --- | --- | --- |
| 1 | 撰写开发技术规范--数据库、JAVA代码规范、项目进度管理方法、技术工具框架使用约束 | manual | 6d | 2013-11-01 | 2013-11-08 |  | 颜超敏 | 48h |
| 2 | 项目（x5-base-core）核心包部分定义，后续补全 | manual | 5d | 2013-11-11 | 2013-11-15 | 1 | 颜超敏 | 40h |
| 3 | 项目团队培训 | manual | 2d | 2013-11-18 | 2013-11-19 | 2 | 颜超敏 | 16h |
| 4 | 项目(x5-base-api)数据模型规范的定义 | manual | 1d | 2013-11-01 | 2013-11-01 |  | 陈尚轩 | 8h |
| 5 | 项目(x5-base-db)数据库访问层的基础API定义 | manual | 2d | 2013-11-04 | 2013-11-05 | 4 | 陈尚轩 | 16h |
| 6 | 流程模型(x5-bpmx-api)的定义 | manual | 3d | 2013-11-07 | 2013-11-11 | 5 | 陈尚轩; 张拥国 | 48h |
| 7 | 流程引擎原生(x5-bpmx-native-api)的定义 | manual | 2d | 2013-11-12 | 2013-11-13 | 6 | 陈尚轩; 张拥国 | 32h |
| 8 | 流程的核心包(x5-bpmx-core)框架的定义 | manual | 3d | 2013-11-01 | 2013-11-05 |  | 黄黎 | 24h |
| 9 | 组织模型(x5-org-api)的定义 | manual | 2d | 2013-11-06 | 2013-11-07 | 8 | 黄黎 | 16h |
| 10 | 变量模型(x5-variable-api)的定义 | manual | 3d | 2013-11-08 | 2013-11-12 | 9 | 黄黎 | 24h |
| 11 | 项目数据库模型定义 | manual | 8d | 2013-11-14 | 2013-11-25 | 7 | 陈尚轩; 张拥国; 颜超敏 | 128h |
| 12 | 项目数据模式的评审 | manual | 3d | 2013-11-22 | 2013-11-26 | 11 | 陈尚轩; 黄黎 | 48h |
